# 2026 Pyrolysis Petal - 24 Mar 2026

Schedule from MS Project, 2026-02-27 to 2026-03-20, A marks actual dates.

## Calendars

- Petal: Mon-Sun 06:00-18:00.

## Resources

| Resource |
| --- |
| DT |
| DO |
| BL |
| MS |
| JO |
| MH |
| SEEP |
| AM |

## Schedule

| ID | WBS | Task | Type | Duration | Start | Finish | Predecessors | Complete | Remaining | Actual start | Total slack | Constraint | Resources | Work | Actual work | supporting Resources |
| --- | --- | --- | --- | --- | --- | --- | --- | --- | --- | --- | --- | --- | --- | --- | --- | --- |
| 1 | 1 | **Equipment Recovery** |  | 32.62d? | 2026-02-27 A | 2026-03-20 |  | 82% | 5.8d? |  | 0d |  |  | 570h | 327h |  |
| 2 | 1.1 | **Electromagnet** |  | 14.62d | 2026-03-02 A | 2026-03-11 A |  | 100% |  |  |  |  |  | 95h | 95h |  |
| 3 | 1.1.1 | Remove Lab B EM and ship to Petal | manual | 93h | 2026-03-02 A | 2026-03-09 A |  | 100% |  |  |  |  | BL | 48h | 48h | MS, MH |
| 4 | 1.1.2 | Engine Crane Acquisition/Setup | manual | 1d | 2026-03-03 A | 2026-03-03 A |  | 100% |  |  |  |  | DO | 7h | 7h |  |
| 5 | 1.1.3 | Remove AMP100 EM | manual | 4h | 2026-03-04 A | 2026-03-04 A | 3, 4 | 100% |  |  |  |  |  |  |  |  |
| 6 | 1.1.4 | Install Electromagnet in AMP100 |  | 40h | 2026-03-05 A | 2026-03-11 A | 5 | 100% |  |  |  | finish no earlier than 2026-03-11 | BL | 40h | 40h | MS |
| 7 | 1.2 | **NDIR** |  | 19.12d | 2026-03-02 | 2026-03-14 |  | 45% | 10.61d | 2026-03-03 |  |  | DT | 180h | 40h | DO |
| 8 | 1.2.1 | Ship CO2 Sensor | manual | 10.12d | 2026-03-03 A | 2026-03-09 A |  | 100% |  |  |  |  | DT | 40h | 40h | DO |
| 9 | 1.2.2 | Install CO2 Sensor | manual | 93h | 2026-03-03 | 2026-03-11 | 8 |  |  |  |  |  | DO | 45h |  |  |
| 10 | 1.2.3 | Calibration | manual | 8h | 2026-03-09 | 2026-03-09 | 9 |  |  |  |  |  | DO | 7h |  |  |
| 11 | 1.3 | **Install Equipment** |  | 23.62d? | 2026-03-05 A | 2026-03-20 |  | 99% | 0d? |  | 0d |  |  | 232h | 192h |  |
| 12 | 1.3.1 | **MFCs** |  | 57h? | 2026-03-09 A | 2026-03-13 |  | 99% | 0h? |  |  |  | BL | 40h |  | MS, SEEP |
| 13 | 1.3.1.1 | Installation | manual | 1d | 2026-03-09 A | 2026-03-09 A |  | 100% |  |  |  |  |  |  |  |  |
| 14 | 1.3.1.2 | Troubleshoot Power | manual | 2.62d | 2026-03-10 A | 2026-03-11 A |  | 100% |  |  |  |  |  |  |  |  |
| 15 | 1.3.1.3 | Communication | manual | 2.62d | 2026-03-10 A | 2026-03-11 A |  | 100% |  |  |  |  |  |  |  |  |
| 16 | 1.3.1.4 | Signal processing | manual | 2.62d | 2026-03-10 A | 2026-03-11 A |  | 100% |  |  |  |  |  |  |  |  |
| 17 | 1.3.2 | S-Team Tuner | manual | 189h | 2026-03-05 A | 2026-03-20 A |  | 100% |  |  |  |  | BL | 96h | 96h | MS |
| 18 | 1.3.3 | Spacer - 3in | manual | 189h | 2026-03-05 A | 2026-03-20 A |  | 100% |  |  |  |  | BL | 96h | 96h | MS |
| 19 | 1.4 | **Circulator** |  | 0d | 2026-02-27 | 2026-02-27 |  |  |  |  | 15d |  |  |  |  |  |
| 20 | 1.4.1 | Sairem exchange circulator | manual | 1d? | 2026-03-02 | 2026-03-02 |  |  |  |  |  |  |  |  |  |  |
| 21 | 1.4.2 | Unistall circulator from Lab B | manual | 1d? | 2026-02-27 | 2026-02-27 |  |  |  |  |  |  |  |  |  |  |
| 22 | 1.4.3 | Package/ship circulater to Petal | manual | 1d? | 2026-02-27 | 2026-02-27 |  |  |  |  |  |  |  |  |  |  |
| 23 | 1.5 | Data analysis | manual | 2.62d | 2026-03-16 | 2026-03-17 |  |  |  |  |  |  | BL | 16h |  |  |
| 24 | 1.6 | **Analysis by MW experts** |  | 4.12d | 2026-03-18 | 2026-03-20 |  |  |  |  |  |  | JO | 47h |  |  |
| 25 | 1.6.1 | Site preparation | manual | 1d | 2026-03-18 | 2026-03-18 |  |  |  |  |  |  | JO | 7h |  |  |
| 26 | 1.6.2 | Sairem site visit | manual | 2d | 2026-03-19 | 2026-03-20 |  |  |  |  |  |  | AM | 16h |  |  |

| ID | WBS | Task | Type | Duration | Start | Finish | Predecessors | Complete | Remaining | Actual start | Total slack | Free slack | Resources | Work | Actual work | supporting Resources |
| --- | --- | --- | --- | --- | --- | --- | --- | --- | --- | --- | --- | --- | --- | --- | --- | --- |
| 27 | 2 | **Safety & Operational Documents** |  | 23.62d | 2026-03-02 A | 2026-03-17 |  | 79% | 5.04d |  |  |  | JO | 518h | 215.3h | BL, MH |
| 28 | 2.1 | **Update and review SOPs** |  | 21d | 2026-03-02 A | 2026-03-16 |  | 90% | 2.17d |  |  |  | JO | 286h | 168h | BL |
| 29 | 2.1.1 | Protocol for SOP update | manual | 5.62d | 2026-03-09 A | 2026-03-12 A |  | 100% |  |  |  |  | BL | 32h | 32h |  |
| 30 | 2.1.2 | Startup site operator SOP | manual | 11.62d | 2026-03-02 A | 2026-03-09 A |  | 100% |  |  |  |  | JO | 48h | 48h | MS |
| 31 | 2.1.3 | Startup control room SOP | manual | 1d | 2026-03-06 A | 2026-03-06 |  | 50% | 0.5d |  |  |  | BL | 7h | 4h | DO |
| 32 | 2.1.4 | Shutdown site operator SOP | manual | 7.12d | 2026-03-06 A | 2026-03-10 A |  | 100% |  |  |  |  | MS | 24h | 24h |  |
| 33 | 2.1.5 | Shutdown control room SOP | manual | 1d | 2026-03-06 | 2026-03-06 |  |  |  |  |  |  | BL | 7h |  | DO |
| 34 | 2.1.6 | Site/operator check SOP | manual | 1d | 2026-03-06 | 2026-03-06 |  |  |  |  |  |  | JO | 7h |  |  |
| 35 | 2.1.7 | Startup checklist site | manual | 7.12d | 2026-03-06 A | 2026-03-10 A |  | 100% |  |  |  |  | MS | 24h | 24h |  |
| 36 | 2.1.8 | Startup checklist operator | manual | 1d | 2026-03-06 | 2026-03-06 |  |  |  |  |  |  | BL | 7h |  |  |
| 37 | 2.1.9 | Shutdown checklist site | manual | 7.12d | 2026-03-06 A | 2026-03-10 A |  | 100% |  |  |  |  | MS | 24h | 24h |  |
| 38 | 2.1.10 | Shutdown checklist operator | manual | 1d | 2026-03-06 | 2026-03-06 |  |  |  |  |  |  | BL | 7h |  |  |
| 39 | 2.1.11 | **Modify all SOPs and checklists for remote 1000 hrs** |  | 2d | 2026-03-13 | 2026-03-14 |  |  |  |  |  |  | JO | 19h |  |  |
| 40 | 2.1.11.1 | Operation stratagy | manual | 1d | 2026-03-13 | 2026-03-13 |  |  |  |  |  |  | JO | 7h |  |  |
| 41 | 2.2 | **Petal site operator qualifications** |  | 18d | 2026-03-05 | 2026-03-17 |  | 90% | 1.8d | 2026-03-09 |  |  | JO | 104h | 35.3h |  |
| 42 | 2.2.1 | Training manual/program | manual | 1d? | 2026-03-05 | 2026-03-05 |  |  |  |  |  |  |  |  |  |  |
| 43 | 2.2.2 | Training test and certification | manual | 7.12d | 2026-03-09 A | 2026-03-13 |  | 90% | 0.71d |  |  |  | BL | 40h | 35.3h |  |
| 44 | 2.2.3 | Management of change for qualifications | manual | 1d? | 2026-03-05 | 2026-03-05 |  |  |  |  |  |  |  |  |  |  |
| 45 | 2.3 | **Cambridge operator qualifications** |  | 1.12d | 2026-03-05 | 2026-03-05 |  |  |  |  |  |  | JO | 32h |  |  |
| 46 | 2.3.1 | Training manual/program | manual | 1d? | 2026-03-05 | 2026-03-05 |  |  |  |  |  |  |  |  |  |  |
| 47 | 2.3.2 | Training test and certification | manual | 7.12d | 2026-03-05 | 2026-03-09 |  |  |  |  |  |  | BL | 24h |  |  |
| 48 | 2.3.3 | Management of change for qualifications | manual | 1d? | 2026-03-05 | 2026-03-05 |  |  |  |  |  |  |  |  |  |  |
| 49 | 2.4 | **PSSR for 1000 hours** |  | 0d | 2026-03-11 | 2026-03-11 | 52 |  |  |  | -4.12d | 0d | JO |  |  |  |
| 50 | 2.4.1 | Emergency response plan | manual | 1d? | 2026-03-02 | 2026-03-02 |  |  |  |  |  |  |  |  |  |  |

Notes:
- 28: Startup SOP complete

| ID | WBS | Task | Type | Duration | Start | Finish | Predecessors | Complete | Remaining | Total slack | Constraint | Resources | Work | Actual work | supporting Resources |
| --- | --- | --- | --- | --- | --- | --- | --- | --- | --- | --- | --- | --- | --- | --- | --- |
| 51 | 3 | **Commissioning** |  | 25.12d | 2026-03-02 A | 2026-03-18 |  | 18% | 20.59d | 3d |  | BL | 398h | 80h |  |
| 52 | 3.1 | Pressure Test |  | 40h | 2026-03-05 A | 2026-03-11 A |  | 100% |  |  | finish no earlier than 2026-03-11 | DO | 40h | 40h |  |
| 53 | 3.2 | GLP | manual | 20.62d | 2026-03-05 | 2026-03-18 |  |  |  |  |  |  |  |  |  |
| 54 | 3.3 | AMP100 | manual | 20.62d | 2026-03-05 | 2026-03-18 |  |  |  |  |  |  |  |  |  |
| 55 | 3.4 | Secure Natural Gas | manual | 10.12d | 2026-03-03 A | 2026-03-09 A |  | 100% |  |  |  | JO | 40h | 40h |  |
| 56 | 3.5 | Process Condition Testing |  | 6h | 2026-03-12 | 2026-03-12 | 52, 49 |  |  | 12.25d |  | BL | 6h |  | MS |
| 57 | 3.6 | Train Petal Operators | manual | 5.62d | 2026-03-11 | 2026-03-14 |  |  |  |  |  | JO | 32h |  | BL |
| 58 | 3.7 | **Training Cambridge Operators** |  | 19.12d | 2026-03-02 | 2026-03-14 |  |  |  | 0d |  | BL | 200h |  |  |
| 59 | 3.7.1 | Dimitri | manual | 8.62d | 2026-03-09 | 2026-03-14 |  |  |  |  |  | DO | 48h |  |  |
| 60 | 3.7.2 | Marcelo | manual | 4.12d | 2026-03-02 | 2026-03-04 |  |  |  |  |  | MS | 24h |  |  |
| 61 | 3.7.3 | Jorj | manual | 4.12d | 2026-03-02 | 2026-03-04 |  |  |  |  |  | JO | 24h |  |  |
| 62 | 3.7.4 | Matt | manual | 4.12d | 2026-03-02 | 2026-03-04 |  |  |  |  |  | MH | 24h |  |  |
| 63 | 4 | **Duration runs at KPI conditions** |  | 4.12d | 2026-03-09 | 2026-03-11 | 1, 27, 49, 55 |  |  |  |  | DO | 45h |  | DT |
| 64 | 4.1 | 8 hours at 2:1 | manual | 1d | 2026-03-09 | 2026-03-09 |  |  |  |  |  | DO | 7h |  |  |
| 65 | 4.2 | 8 hours at 2.5:1 | manual | 1d | 2026-03-10 | 2026-03-10 |  |  |  |  |  | DO | 7h |  |  |
| 66 | 4.3 | 8 hours at 3:1 | manual | 1d | 2026-03-11 | 2026-03-11 |  |  |  |  |  | DO | 7h |  |  |
