# Atlas_phase1_100h_13Mar-MH

Schedule from MS Project, 2026-03-02 to 2026-03-14, A marks actual dates.

## Calendars

- Petal: Mon-Sun 06:00-18:00.

## Resources

| Resource |
| --- |
| DT |
| DO |
| BL |
| MS |
| JO |
| MH |
| SEEP |

## Schedule

| ID | WBS | Task | Type | Duration | Start | Finish | Predecessors | Complete | Remaining | Actual start | Total slack | Constraint | Resources | Work | Actual work | supporting Resources |
| --- | --- | --- | --- | --- | --- | --- | --- | --- | --- | --- | --- | --- | --- | --- | --- | --- |
| 1 | 1 | **Equipment Recovery** |  | 11.62d? | 2026-03-02 A | 2026-03-09 |  | 96% | 0.45d? |  | 0d |  |  | 123h | 84h |  |
| 2 | 1.1 | **Microwave Generator** |  | 11.62d | 2026-03-02 A | 2026-03-09 A |  | 100% |  |  |  |  |  | 52h | 52h |  |
| 3 | 1.1.1 | Remove Lab B EM and ship to Petal | manual | 93h | 2026-03-02 A | 2026-03-09 A |  | 100% |  |  |  |  | BL | 48h | 48h | MS, MH |
| 4 | 1.1.2 | Engine Crane Acquisition/Setup | manual | 1d | 2026-03-03 A | 2026-03-03 A |  | 100% |  |  |  |  |  |  |  |  |
| 5 | 1.1.3 | Remove AMP100 EM | manual | 4h | 2026-03-04 A | 2026-03-04 A | 3, 4 | 100% |  |  |  |  |  |  |  |  |
| 6 | 1.1.4 | Install Electromagnet in AMP100 |  | 4h | 2026-03-05 A | 2026-03-05 A | 5 | 100% |  |  |  | start no earlier than 2026-03-05 | BL | 4h | 4h | MS |
| 7 | 1.2 | **NDIR** |  | 5.62d? | 2026-03-02 | 2026-03-05 |  | 82% | 1.02d? | 2026-03-03 |  |  | DT | 42h | 8h | DO |
| 8 | 1.2.1 | Ship CO2 Sensor | manual | 1d | 2026-03-03 A | 2026-03-03 A |  | 100% |  |  |  |  | DT | 7h | 7h | DO |
| 9 | 1.2.2 | Install CO2 Sensor | manual | 1h | 2026-03-09 A | 2026-03-09 A |  | 100% |  |  |  |  | DO | 1h | 1h |  |
| 10 | 1.2.3 | Calibration | manual | 2h | 2026-03-09 | 2026-03-09 | 9 |  |  |  |  |  | DO | 2h |  |  |
| 11 | 1.3 | **Install Equipment** |  | 7.12d | 2026-03-05 A | 2026-03-09 |  | 92% | 0.57d |  | 0d |  |  | 29h | 24h |  |
| 12 | 1.3.1 | MFCs | manual | 57h | 2026-03-05 A | 2026-03-09 A |  | 100% |  |  |  |  | BL | 24h | 24h | MS, SEEP |
| 13 | 1.3.2 | S-Team Tuner | manual | 3h | 2026-03-05 | 2026-03-05 |  |  |  |  |  |  | BL | 3h |  | MS |
| 14 | 1.3.3 | Spacer - 3in | manual | 2h | 2026-03-05 | 2026-03-05 |  |  |  |  |  |  | BL | 2h |  | MS |
| 15 | 2 | **Safety & Operational Documents** |  | 17.5d? | 2026-03-02 A | 2026-03-13 |  | 15% | 14.88d? |  | 0d |  | JO | 332h | 23.85h | BL, MH |
| 16 | 2.1 | **Update and review SOPs** |  | 14.62d? | 2026-03-02 A | 2026-03-11 |  | 21% | 11.49d? |  |  |  | JO | 189h | 12h | BL |
| 17 | 2.1.1 | Protocol for SOP update | manual | 5.62d | 2026-03-09 A | 2026-03-12 A |  | 100% |  |  |  |  |  |  |  |  |
| 18 | 2.1.2 | **Field Operator** |  | 11.62d | 2026-03-02 | 2026-03-09 |  |  |  |  | 0d |  |  | 76h |  |  |
| 19 | 2.1.2.1 | Startup SOP | manual | 11.62d | 2026-03-02 | 2026-03-09 |  |  |  |  |  |  | JO | 48h |  | MS |
| 20 | 2.1.2.2 | Shutdown site operator SOP | manual | 1d | 2026-03-06 | 2026-03-06 |  |  |  |  |  |  | MS | 7h |  |  |
| 21 | 2.1.2.3 | Review SOPs | manual | 1d | 2026-03-06 | 2026-03-06 |  |  |  |  |  |  | JO | 7h |  |  |
| 22 | 2.1.2.4 | Startup checklist site | manual | 1d | 2026-03-06 | 2026-03-06 |  |  |  |  |  |  | MS | 7h |  |  |
| 23 | 2.1.2.5 | Shutdown checklist site | manual | 1d | 2026-03-06 | 2026-03-06 |  |  |  |  |  |  | MS | 7h |  |  |
| 24 | 2.1.3 | **Control Room Operator** |  | 1d | 2026-03-06 | 2026-03-06 |  |  |  |  | 0d |  |  | 35h |  |  |
| 25 | 2.1.3.1 | Startup control room SOP | manual | 1d | 2026-03-06 | 2026-03-06 |  |  |  |  |  |  | BL | 7h |  | DO |
| 26 | 2.1.3.2 | Shutdown control room SOP | manual | 1d | 2026-03-06 | 2026-03-06 |  |  |  |  |  |  | BL | 7h |  | DO |
| 27 | 2.1.3.3 | Review SOPs | manual | 1d | 2026-03-06 | 2026-03-06 |  |  |  |  |  |  | JO | 7h |  |  |
| 28 | 2.1.3.4 | Startup checklist operator | manual | 1d | 2026-03-06 | 2026-03-06 |  |  |  |  |  |  | BL | 7h |  |  |
| 29 | 2.1.3.5 | Shutdown checklist operator | manual | 1d | 2026-03-06 | 2026-03-06 |  |  |  |  |  |  | BL | 7h |  |  |

Notes:
- 16: Startup SOP complete

| ID | WBS | Task | Type | Duration | Start | Finish | Predecessors | Complete | Remaining | Total slack | Free slack | Constraint | Resources | Work | Actual work | supporting Resources |
| --- | --- | --- | --- | --- | --- | --- | --- | --- | --- | --- | --- | --- | --- | --- | --- | --- |
| 30 | 2.1.4 | **Modify all SOPs and checklists for remote 1000 hrs** |  | 1d | 2026-03-13 | 2026-03-13 |  |  |  |  |  |  | JO | 14h |  |  |
| 31 | 2.1.4.1 | Operation stratagy | manual | 1d | 2026-03-13 | 2026-03-13 |  |  |  |  |  |  | JO | 7h |  |  |
| 32 | 2.2 | **Petal site operator qualifications** |  | 1.12d | 2026-03-05 | 2026-03-05 |  |  |  |  |  |  | JO | 32h |  |  |
| 33 | 2.2.1 | Training manual/program | manual | 1d? | 2026-03-05 | 2026-03-05 |  |  |  |  |  |  |  |  |  |  |
| 34 | 2.2.2 | Training test and certification | manual | 4.12d | 2026-03-02 | 2026-03-04 |  |  |  |  |  |  | BL | 24h |  |  |
| 35 | 2.2.3 | Management of change for qualifications | manual | 1d? | 2026-03-05 | 2026-03-05 |  |  |  |  |  |  |  |  |  |  |
| 36 | 2.3 | **Cambridge operator qualifications** |  | 1.12d | 2026-03-05 | 2026-03-05 |  |  |  |  |  |  | JO | 32h |  |  |
| 37 | 2.3.1 | Training manual/program | manual | 1d? | 2026-03-05 | 2026-03-05 |  |  |  |  |  |  |  |  |  |  |
| 38 | 2.3.2 | Training test and certification | manual | 7.12d | 2026-03-05 | 2026-03-09 |  |  |  |  |  |  | BL | 24h |  |  |
| 39 | 2.3.3 | Management of change for qualifications | manual | 1d? | 2026-03-05 | 2026-03-05 |  |  |  |  |  |  |  |  |  |  |
| 40 | 2.4 | **PSSR for 1000 hours** |  | 0d | 2026-03-05 | 2026-03-05 | 43 |  |  | 4.88d | 0.38d |  | JO |  |  |  |
| 41 | 2.4.1 | Emergency response plan | manual | 1d? | 2026-03-02 | 2026-03-02 |  |  |  |  |  |  |  |  |  |  |
| 42 | 3 | **Commissioning** |  | 19.12d | 2026-03-02 A | 2026-03-14 |  | 26% | 14.1d | 0d |  |  | BL | 366h | 40h |  |
| 43 | 3.1 | Pressure Test |  | 8h | 2026-03-05 | 2026-03-05 |  |  |  | 1.5d | 0d | finish no earlier than 2026-03-05 | BL | 8h |  | MS |
| 44 | 3.2 | GLP | manual | 1d? | 2026-03-02 | 2026-03-02 |  |  |  |  |  |  |  |  |  |  |
| 45 | 3.3 | AMP100 | manual | 1d? | 2026-03-02 | 2026-03-02 |  |  |  |  |  |  |  |  |  |  |
| 46 | 3.4 | Secure Natural Gas | manual | 10.12d | 2026-03-03 A | 2026-03-09 A |  | 100% |  |  |  |  | JO | 40h | 40h |  |
| 47 | 3.5 | Process Condition Testing |  | 6h | 2026-03-06 | 2026-03-06 | 43, 40 |  |  | 10.75d |  |  | BL | 6h |  | MS |
| 48 | 3.6 | Train Petal Operators | manual | 5.62d | 2026-03-11 | 2026-03-14 |  |  |  |  |  |  | JO | 32h |  | BL |
| 49 | 3.7 | **Training Cambridge Operators** |  | 19.12d | 2026-03-02 | 2026-03-14 |  |  |  | 0d |  |  | BL | 200h |  |  |
| 50 | 3.7.1 | Dimitri | manual | 8.62d | 2026-03-09 | 2026-03-14 |  |  |  |  |  |  | DO | 48h |  |  |
| 51 | 3.7.2 | Marcelo | manual | 4.12d | 2026-03-02 | 2026-03-04 |  |  |  |  |  |  | MS | 24h |  |  |
| 52 | 3.7.3 | Jorj | manual | 4.12d | 2026-03-02 | 2026-03-04 |  |  |  |  |  |  | JO | 24h |  |  |
| 53 | 3.7.4 | Matt | manual | 4.12d | 2026-03-02 | 2026-03-04 |  |  |  |  |  |  | MH | 24h |  |  |

| ID | WBS | Task | Type | Duration | Start | Finish | Predecessors | Resources | Work | supporting Resources |
| --- | --- | --- | --- | --- | --- | --- | --- | --- | --- | --- |
| 54 | 4 | **Duration runs at KPI conditions** |  | 4.12d | 2026-03-09 | 2026-03-11 | 1, 15, 40, 46 | DO | 45h | DT |
| 55 | 4.1 | 8 hours at 2:1 | manual | 1d | 2026-03-09 | 2026-03-09 |  | DO | 7h |  |
| 56 | 4.2 | 8 hours at 2.5:1 | manual | 1d | 2026-03-10 | 2026-03-10 |  | DO | 7h |  |
| 57 | 4.3 | 8 hours at 3:1 | manual | 1d | 2026-03-11 | 2026-03-11 |  | DO | 7h |  |
