# MPMProject324

Schedule from MS Project, 2026-02-02 to 2026-09-18.

## Calendars

- Standard: Mon-Fri 08:00-12:00, 13:00-17:00; Sat-Sun off.

## Resources

| Resource |
| --- |
| ASTERM |
| KC |
| MH |
| DT.DO |
| JO |
| DO. MS |
| KT |
| DT |
| MS |
| SB |
| ME |
| JW |
| DO |
| DM |
| LB |

## Schedule

| ID | WBS | Task | Type | Duration | Start | Finish | Predecessors | Total slack | Free slack | Constraint | Resources | Work |
| --- | --- | --- | --- | --- | --- | --- | --- | --- | --- | --- | --- | --- |
| 1 | 1 | AMP 6 kW System | manual | 1d? | 2026-03-05 | 2026-03-05 |  |  |  |  |  |  |
| 2 | 2 | Ship components from France |  | 6w | 2026-02-02 | 2026-03-13 |  | 112d | 0d | start no earlier than 2026-02-02 | MH | 240h |
| 3 | 3 | Evaluate components in shipment for use |  | 1w | 2026-03-16 | 2026-03-20 | 2 | 112d | 0d |  | DO | 40h |
| 4 | 4 | Determine components needing to be purchased | manual | 1w | 2026-03-23 | 2026-03-27 | 3 |  |  |  | DT | 40h |
| 5 | 5 | Get budget approval for expenditure & order | manual | 3d | 2026-03-30 | 2026-04-01 | 4 |  |  |  | JO | 24h |
| 6 | 6 | Dry Reforming skid construction | manual | 2w | 2026-05-18 | 2026-05-29 | 5 |  |  |  | DO | 80h |
| 8 | 7 | AMP Instrumentation | manual | 1d? | 2026-03-05 | 2026-03-05 |  |  |  |  |  |  |
| 9 | 8 | Get NDIR operational | manual | 1w | 2026-07-28 | 2026-08-03 |  |  |  |  | DT | 40h |
| 11 | 9 | Compression System Procurement | manual | 1d? | 2026-03-05 | 2026-03-05 |  |  |  |  |  |  |
| 12 | 10 | Receive quotation for compressor | manual | 1d | 2026-03-17 | 2026-03-17 |  |  |  |  | JW | 8h |
| 13 | 11 | Establish contract agreement with ASTERM | manual | 1d | 2026-03-24 | 2026-03-24 |  |  |  |  | KT | 8h |
| 14 | 12 | Design Review | manual | 1d | 2026-03-31 | 2026-03-31 |  |  |  |  | JW | 8h |
| 15 | 13 | HAZOP | manual | 1d | 2026-04-07 | 2026-04-07 |  |  |  |  |  |  |
| 16 | 14 | Review final specifications & approval of drawings | manual | 1w | 2026-03-30 | 2026-04-03 |  |  |  |  | JW | 40h |
| 17 | 15 | Final Design Approval | manual | 1d | 2026-04-10 | 2026-04-10 |  |  |  |  |  |  |
| 18 | 16 | Compressor manufacturing | manual | 9w | 2026-04-13 | 2026-06-12 | 16 |  |  |  | ASTERM | 360h |
| 19 | 17 | Acceptance Testing | manual | 1d | 2026-06-16 | 2026-06-16 | 18 |  |  |  | DT | 8h |
| 20 | 18 | Shipping | manual | 1.2w | 2026-06-17 | 2026-06-24 | 19 |  |  |  | ASTERM | 48h |
| 21 | 19 | Customs | manual | 1w | 2026-06-25 | 2026-07-01 | 20 |  |  |  | MH | 40h |
| 22 | 20 | Commissoning at SBU | manual | 1w | 2026-08-13 | 2026-08-19 | 20, 46 |  |  |  | DT | 40h |
| 23 | 21 | Final Payment | manual | 1d | 2026-08-20 | 2026-08-20 | 22 |  |  |  | MH | 8h |
| 25 | 22 | Methanol Loop | manual | 1d? | 2026-03-05 | 2026-03-05 |  |  |  |  |  |  |
| 26 | 23 | Discuss with SBU requirments for compressor & AMP skid | manual | 1d | 2026-03-10 | 2026-03-10 |  |  |  |  | JW | 8h |
| 27 | 24 | SBU to provide methanol loop process input specs | manual | 1d | 2026-03-13 | 2026-03-13 |  |  |  |  | DM | 8h |
| 28 | 25 | Maat to provide plot plan for AMP & compressor to SBU | manual | 1d | 2026-03-20 | 2026-03-20 |  |  |  |  | JW | 8h |
| 29 | 26 | Negotiate / finalize Stony Brook contract | manual | 3w | 2026-03-11 | 2026-03-31 | 26 |  |  |  | KT | 120h |
| 30 | 27 | Kick off meeting / site visit to Stony Brook | manual | 1d | 2026-04-01 | 2026-04-01 | 29 |  |  |  | JW | 8h |
| 32 | 28 | Safety Analysis | manual | 1d? | 2026-03-05 | 2026-03-05 |  |  |  |  |  |  |
| 33 | 29 | AMP operating description (startup, steady state, shutdown) | manual | 1w | 2026-03-16 | 2026-03-20 |  |  |  |  | DT | 40h |
| 34 | 30 | Compression operating description (startup, steady state, shutdown) | manual | 1w | 2026-03-16 | 2026-03-20 |  |  |  |  | JW | 40h |
| 35 | 31 | Develop overall system PFD | manual | 1w | 2026-03-30 | 2026-04-03 | 34 |  |  |  | JW | 40h |
| 37 | 32 | Experimental Plan | manual | 1d? | 2026-03-05 | 2026-03-05 |  |  |  |  |  |  |
| 38 | 33 | Develped by Leslie Feb 16 | manual | 1d | 2026-02-16 | 2026-02-16 |  |  |  |  | LB | 8h |
| 39 | 34 | Review Plan at Maat Energy | manual | 1d | 2026-03-20 | 2026-03-20 |  |  |  |  | DT | 8h |
| 40 | 35 | Review Plan with SBU | manual | 1d | 2026-03-24 | 2026-03-24 |  |  |  |  | DT | 8h |
| 42 | 36 | Commisoning, Testing & Decommisioning | manual | 1d? | 2026-03-05 | 2026-03-05 |  |  |  |  |  |  |
| 43 | 37 | Test assembled skid for dry reforming | manual | 2.4w | 2026-05-28 | 2026-06-12 | 42 |  |  |  | DO | 96h |
| 44 | 38 | Transport skid components to Stony Brook | manual | 1d | 2026-08-03 | 2026-08-03 | 43 |  |  |  | MH | 8h |
| 45 | 39 | Install skid at Stony Brook | manual | 3d | 2026-08-04 | 2026-08-06 | 44 |  |  |  | DO | 24h |
| 46 | 40 | Integrate skid, compressor & meoh test bed | manual | 2d | 2026-08-11 | 2026-08-12 |  |  |  |  | DO | 16h |
| 47 | 41 | Perform Experimental work and analysis | manual | 2w | 2026-08-13 | 2026-08-26 | 46 |  |  |  | DO | 80h |
| 48 | 42 | Decommission skid | manual | 1d | 2026-08-27 | 2026-08-27 | 47 |  |  |  | DO | 8h |
| 49 | 43 | Transport skid components to Cambridge | manual | 1d | 2026-08-28 | 2026-08-28 | 48 |  |  |  | MH | 8h |
| 51 | 44 | Reporting | manual | 1d? | 2026-03-05 | 2026-03-05 |  |  |  |  |  |  |
| 52 | 45 | Receive report from Stony Brook | manual | 1d | 2026-09-07 | 2026-09-07 | 49 |  |  |  | JW | 8h |
| 53 | 46 | Integrate findings into Final DOE Report | manual | 1w | 2026-09-14 | 2026-09-18 | 52 |  |  |  | DT | 40h |
